# Proyecto Concesionario Taller

Schedule from ProjectLibre, 2024-04-12 to 2024-06-28.

## Calendars

- Estandar: Mon-Fri 08:00-12:00, 13:00-17:00; Sat-Sun off.

## Resources

| Resource | Rate |
| --- | --- |
| No Asignado |  |
| Peón suelto | 14.48 |
| Cuadrilla A | 38.48 |
| Cuadrilla E | 31.05 |
| Oficial 1ª fontanero | 16 |
| Oficial 1ª | 16.57 |
| Ayudante | 14.67 |
| Equipo montaje carpintería (oficial + ayudante) | 30.5 |
| Peón especializado jardinero | 9.5 |
| Peón ordnario jardinero | 9 |
| Oficial 1ª vidriería | 14.8 |
| Oficial 1ª alicaatdor | 16.5 |
| Oficial 1ª pintor | 15 |
| Ayudante pintor | 11.5 |

## Schedule

| ID | WBS | Task | Duration | Start | Finish | Predecessors | Resources |
| --- | --- | --- | --- | --- | --- | --- | --- |
| 1 | 1 | **PROYECTO CONCESIONARIO - TALLER** | 55.78d | 2024-04-12 | 2024-06-28 |  |  |
| 2 | 1.1 | **1. Acabados interiores** | 55.34d | 2024-04-12 | 2024-06-28 |  |  |
| 3 | 1.1.1 | **1.1. Suelos** | 31.16d | 2024-04-12 | 2024-05-27 |  |  |
| 4 | 1.1.1.1 | Solado taller | 29.42d | 2024-04-12 | 2024-05-23 |  | Peón suelto |
| 5 | 1.1.1.2 | Solado zona comercial | 12.82d | 2024-04-12 | 2024-04-30 |  | Peón suelto |
| 6 | 1.1.1.3 | Solado aseos | 0.75d | 2024-04-30 | 2024-05-01 | 5 | Peón suelto |
| 7 | 1.1.1.4 | Solado vestuarios | 1.74d | 2024-05-23 | 2024-05-27 | 4 | Oficial 1ª pintor; Ayudante pintor |
| 8 | 1.1.2 | **1.2. Tabiquería** | 55.34d | 2024-04-12 | 2024-06-28 |  |  |
| 9 | 1.1.2.1 | Bloques interiores tabicón | 24.19d | 2024-05-27 | 2024-06-28 | 3 | Oficial 1ª; Ayudante |
| 10 | 1.1.2.2 | Tabiques pladur zona comercial | 1.83d | 2024-04-30 | 2024-05-02 | 5 | Cuadrilla A |
| 11 | 1.1.2.3 | Tabiques pladur aseos | 1.18d | 2024-05-01 | 2024-05-02 | 6 | Cuadrilla A |
| 12 | 1.1.2.4 | Tabiques pladur vestuarios | 1.73d | 2024-04-12 | 2024-04-15 |  | Cuadrilla A |
| 13 | 1.1.3 | **1.3. Techos** | 21.06d | 2024-04-12 | 2024-05-13 |  |  |
| 14 | 1.1.3.1 | Falso techo zona comerical | 21.06d | 2024-04-12 | 2024-05-13 |  | Cuadrilla A |
| 15 | 1.1.4 | **1.4. Alicatado y pinturas** | 18.15d | 2024-05-02 | 2024-05-28 |  |  |
| 16 | 1.1.4.1 | Alicatado aseos | 5.24d | 2024-05-02 | 2024-05-09 | 6, 11 | Oficial 1ª alicaatdor |
| 17 | 1.1.4.2 | Pintura vestuarios | 1.74d | 2024-05-27 | 2024-05-28 | 7, 12 | Oficial 1ª pintor; Ayudante pintor |
| 18 | 1.2 | **2. Baños y vestuarios** | 22.89d | 2024-05-28 | 2024-06-28 |  |  |
| 19 | 1.2.1 | Lavabos | 1.12d | 2024-05-28 | 2024-05-30 | 6, 7, 11, 12, 16, 17 | Oficial 1ª fontanero |
| 20 | 1.2.2 | Inodoros | 2.25d | 2024-05-28 | 2024-05-31 | 6, 7, 11, 12, 16, 17 | Oficial 1ª fontanero |
| 21 | 1.2.3 | Urinarios | 0.6d | 2024-05-28 | 2024-05-29 | 6, 7, 11, 12, 16, 17 | Oficial 1ª fontanero |
| 22 | 1.2.4 | Platos de ducha | 0.25d | 2024-05-28 | 2024-05-29 | 6, 7, 11, 12, 16, 17 | Oficial 1ª fontanero |
| 23 | 1.2.5 | Mamparas | 0.07d | 2024-05-28 | 2024-05-28 | 6, 7, 11, 12, 16, 17 | Oficial 1ª; Ayudante |
| 24 | 1.2.6 | **2.1. Puertas** | 0.44d | 2024-06-28 | 2024-06-28 |  |  |
| 25 | 1.2.6.1 | 2.1.1 Puerta corredera | 0.15d | 2024-06-28 | 2024-06-28 | 5, 8 | Equipo montaje carpintería (oficial + ayudante) |
| 26 | 1.2.6.2 | 2.1.2. Puertas entrada | 0.44d | 2024-06-28 | 2024-06-28 | 5, 8 | Equipo montaje carpintería (oficial + ayudante) |

| ID | WBS | Task | Duration | Start | Finish | Predecessors | Resources |
| --- | --- | --- | --- | --- | --- | --- | --- |
| 27 | 1.2.7 | **2.2. Comodidades** | 0.31d | 2024-05-31 | 2024-05-31 |  |  |
| 28 | 1.2.7.1 | 2.2.1. Papeleras | 0.16d | 2024-05-31 | 2024-05-31 | 19, 20, 21, 22, 23 | Peón especializado jardinero; Peón ordnario jardinero |
| 29 | 1.2.7.2 | 2.2.2. Dispensadores de papel y jabón | 0.31d | 2024-05-31 | 2024-05-31 | 19, 20, 21, 22, 23 | Oficial 1ª fontanero |
| 30 | 1.2.7.3 | 2.2.3. Secadores | 0.31d | 2024-05-31 | 2024-05-31 | 19, 20, 21, 22, 23 | Oficial 1ª fontanero |
